# 资产云上线计划

Schedule from a web Gantt chart, 2025-05-20 to 2025-05-20.
Every day is a working day

## Schedule

| ID | WBS | Task | Duration | Start | Finish |
| --- | --- | --- | --- | --- | --- |
| 2 | 1 | **项目准备** | 1d | 2025-05-20 | 2025-05-20 |
| 3 | 1.1 | 项目团队组建 | 1d | 2025-05-20 | 2025-05-20 |
| 4 | 2 | **开发需求沟通** | 1d | 2025-05-20 | 2025-05-20 |
| 5 | 2.1 | 人力云-资产云联动需求 | 1d | 2025-05-20 | 2025-05-20 |
